# Lab5_PlantillaGantt

Schedule from MS Project, 2013-03-18 to 2014-01-06, A marks actual dates.

## Calendars

- Estándar: Mon-Fri 09:00-13:00, 15:00-19:00; Sat-Sun off. Exceptions (off unless hours are given): 2013-03-30 09:00-13:00, 15:00-19:00, 2013-04-27 09:00-13:00, 15:00-19:00.

## Resources

| Resource |
| --- |
| Recurso Humano 1 |
| Recurso Humano 2 |

## Schedule

| ID | WBS | Task | Type | Duration | Start | Finish | Predecessors | Complete | Remaining | Total slack | Free slack | Constraint |
| --- | --- | --- | --- | --- | --- | --- | --- | --- | --- | --- | --- | --- |
| 1 | 1 | **PROYECTO DE FIN DE CARRERA** |  | 213d | 2013-03-18 A | 2014-01-06 |  | 36% | 136.86d | 0d |  |  |
| 2 | 1.1 | **1. Inicio** |  | 73d | 2013-03-18 A | 2013-06-24 A |  | 100% |  |  |  |  |
| 3 | 1.1.1 | Elección y justificación del tema y área del proyecto |  | 6d | 2013-03-18 A | 2013-03-25 A |  | 100% |  |  |  | finish no earlier than 2013-03-25 |
| 4 | 1.1.2 | Entregable 1 | milestone | 0d | 2013-03-25 A | 2013-03-25 A | 3 | 100% |  |  |  |  |
| 5 | 1.1.3 | Revisión de la literatura para elaborar el marco conceptual y el estado del arte |  | 17d | 2013-03-30 A | 2013-04-22 A | 4 | 100% |  |  |  | start no earlier than 2013-03-30 |
| 6 | 1.1.4 | Elaboración de la problemática, marco teórico y estado del arte |  | 17d | 2013-03-30 A | 2013-04-22 A | 4 | 100% |  |  |  | start no earlier than 2013-03-30 |
| 7 | 1.1.5 | Entregable 2 | milestone | 0d | 2013-04-22 A | 2013-04-22 A | 6, 5 | 100% |  |  |  | start no earlier than 2013-04-22 |
| 8 | 1.1.6 | Definición del objetivo general, objetivos específicos y resultados esperados |  | 17d | 2013-04-27 A | 2013-05-20 A | 7 | 100% |  |  |  | must finish on 2013-05-20 |
| 9 | 1.1.7 | Entregable 3 | milestone | 0d | 2013-05-20 A | 2013-05-20 A | 8 | 100% |  |  |  | start no earlier than 2013-05-20 |
| 10 | 1.1.8 | Definición del alcance y limitaciones del proyecto, y los métodos y procedimientos a usar |  | 11d | 2013-05-25 A | 2013-06-10 A | 9 | 100% |  |  |  | start no earlier than 2013-05-25 |
| 11 | 1.1.9 | Entregable 4 | milestone | 0d | 2013-06-10 A | 2013-06-10 A | 10 | 100% |  |  |  | start no earlier than 2013-06-10 |
| 12 | 1.1.10 | Definición de la justificación y viabilidad del proyecto, y correcciones de entregables anteriores |  | 4d | 2013-06-12 A | 2013-06-17 A | 11 | 100% |  |  |  | finish no earlier than 2013-06-17 |
| 13 | 1.1.11 | Entregable 5 | milestone | 0d | 2013-06-17 A | 2013-06-17 A | 12 | 100% |  |  |  | start no earlier than 2013-06-17 |
| 14 | 1.1.12 | Primera sustentación del proyecto ante jurado |  | 1d | 2013-06-24 A | 2013-06-24 A | 13 | 100% |  |  |  | start no earlier than 2013-06-24 |
| 15 | 1.2 | **2. Planificacion** |  | 43d | 2013-05-25 A | 2013-07-24 |  | 58% | 18.11d | 118d |  |  |
| 16 | 1.2.1 | Elección de metodología que servirá para la gestión del proyecto |  | 3d | 2013-05-25 A | 2013-05-29 A |  | 100% |  |  |  | start no earlier than 2013-05-25 |
| 17 | 1.2.2 | Metodología PMBOK escogida | milestone | 0d | 2013-05-29 A | 2013-05-29 A | 16 | 100% |  |  |  |  |
| 18 | 1.2.3 | Elección de metodología que servirá para la gestión del producto |  | 3d | 2013-05-25 A | 2013-05-29 A |  | 100% |  |  |  | start no earlier than 2013-05-25 |
| 19 | 1.2.4 | Metodología XP escogida | milestone | 0d | 2013-05-29 A | 2013-05-29 A | 18 | 100% |  |  |  |  |
| 20 | 1.2.5 | Elaboración de cronograma del proyecto |  | 3d | 2013-06-13 A | 2013-06-17 A |  | 100% |  |  |  | finish no earlier than 2013-06-17 |
| 21 | 1.2.6 | Diagrama de Gantt | milestone | 0d | 2013-06-17 A | 2013-06-17 A | 20 | 100% |  |  |  | start no earlier than 2013-06-17 |
| 22 | 1.2.7 | Elaboración de la estructura de desglose de trabajo (EDT) |  | 2d | 2013-07-11 A | 2013-07-13 A | 21 | 100% |  |  |  | finish no earlier than 2013-07-13 |
| 23 | 1.2.8 | Estructura de desglose de trabajo elaborada | milestone | 0d | 2013-07-13 | 2013-07-13 | 22 |  |  | 26d | 0d | start no earlier than 2013-07-13 |
| 24 | 1.2.9 | Desarrollo del Acta de Constitución del Proyecto |  | 1d | 2013-07-15 | 2013-07-15 | 23 |  |  | 26d | 0d | start no earlier than 2013-07-15 |
| 25 | 1.2.10 | Acta de Constitución del Proyecto | milestone | 0d | 2013-07-15 | 2013-07-15 | 24 |  |  | 26d | 0d |  |
| 26 | 1.2.11 | Desarrollo del Plan de Gestión del Proyecto |  | 2d | 2013-07-16 | 2013-07-17 | 25 |  |  | 26d | 0d | start no earlier than 2013-07-16 |
| 27 | 1.2.12 | Plan de Gestión del Proyecto | milestone | 0d | 2013-07-17 | 2013-07-17 | 26 |  |  | 26d | 0d | start no earlier than 2013-07-16 |
| 28 | 1.2.13 | Elaboración de plan de gestión de riesgos |  | 2d | 2013-07-18 | 2013-07-19 | 27 |  |  | 118d | 0d | start no earlier than 2013-07-18 |
| 29 | 1.2.14 | Plan de Gestión de Riesgos | milestone | 0d | 2013-07-19 | 2013-07-19 | 28 |  |  | 118d | 0d | finish no earlier than 2013-07-10 |
| 30 | 1.2.15 | Elaboración de la matriz de riesgos |  | 3d | 2013-07-22 | 2013-07-24 | 29 |  |  | 118d | 0d |  |
| 31 | 1.2.16 | Matriz de riesgos | milestone | 0d | 2013-07-24 | 2013-07-24 | 30 |  |  | 118d |  | finish no earlier than 2013-07-10 |

| ID | WBS | Task | Type | Duration | Start | Finish | Predecessors | Total slack | Free slack | Constraint |
| --- | --- | --- | --- | --- | --- | --- | --- | --- | --- | --- |
| 32 | 1.3 | **3. Ejecucion** |  | 97d | 2013-07-23 | 2013-12-04 |  | 23d |  |  |
| 33 | 1.3.1 | **Fase de Análisis** |  | 36d | 2013-07-23 | 2013-09-10 |  | 23d |  |  |
| 34 | 1.3.1.1 | Elaboración del caso de negocio |  | 5d | 2013-07-23 | 2013-07-29 |  | 23d | 0d | start no earlier than 2013-07-23 |
| 35 | 1.3.1.2 | Documento con el caso de negocio | milestone | 0d | 2013-07-29 | 2013-07-29 | 34 | 23d | 0d |  |
| 36 | 1.3.3.3 | Modelamiento de los procesos de negocio |  | 9d | 2013-07-30 | 2013-08-09 | 35 | 23d | 0d |  |
| 37 | 1.3.3.4 | Diagramas de procesos de negocio | milestone | 0d | 2013-08-09 | 2013-08-09 | 36 | 23d | 0d |  |
| 38 | 1.3.3.5 | Definición de las reglas y políticas de negocio |  | 5d | 2013-08-12 | 2013-08-16 | 37 | 23d | 0d |  |
| 39 | 1.3.3.6 | Documento con las reglas y políticas del negocio | milestone | 0d | 2013-08-16 | 2013-08-16 | 38 | 23d | 0d |  |
| 40 | 1.3.3.7 | Elaboración de requerimientos del sistema |  | 4d | 2013-08-19 | 2013-08-22 | 39 | 23d | 0d |  |
| 41 | 1.3.3.8 | Catálogo de requisitos | milestone | 0d | 2013-08-22 | 2013-08-22 | 40 | 23d | 0d |  |
| 42 | 1.3.3.9 | Elaboración de historias de usuarios |  | 5d | 2013-08-23 | 2013-08-29 | 41 | 23d | 0d |  |
| 43 | 1.3.3.10 | Historias de usuarios documentadas | milestone | 0d | 2013-08-29 | 2013-08-29 | 42 | 23d | 0d |  |
| 44 | 1.3.3.11 | Análisis comparativo de posibles herramientas tecnológicas a adoptar para el proyecto |  | 2d | 2013-08-30 | 2013-09-02 | 43 | 23d | 0d |  |
| 45 | 1.3.3.12 | Cuadro comparativo con las herramientas tecnológicas disponibles | milestone | 0d | 2013-09-02 | 2013-09-02 | 44 | 23d | 0d |  |
| 46 | 1.3.3.13 | Elaboración de diagrama de clases |  | 5d | 2013-09-03 | 2013-09-09 | 45 | 23d | 0d | start no earlier than 2013-08-28 |
| 47 | 1.3.3.14 | Diagrama de clases elaborado |  | 1d | 2013-09-10 | 2013-09-10 | 46 | 23d | 0d |  |
| 48 | 1.3.2 | **Fase de Diseño** |  | 19d | 2013-09-11 | 2013-10-07 |  | 23d |  |  |
| 49 | 1.3.2.1 | Elaboración de modelo de base de datos |  | 5d | 2013-09-11 | 2013-09-17 | 47 | 23d | 0d | start no earlier than 2013-09-05 |
| 50 | 1.3.2.2 | Modelo de base de datos elaborado |  | 1d | 2013-09-18 | 2013-09-18 | 49 | 23d | 0d | start no earlier than 2013-09-12 |
| 51 | 1.3.2.3 | Elaboración de pseudocódigo en lenguaje natural y español del algoritmo Tabú para la asignación del mejor proveedor al cliente |  | 4d | 2013-09-19 | 2013-09-24 | 50 | 23d | 0d |  |
| 52 | 1.3.2.4 | Documento con el pseudocódigo del algoritmo Tabú | milestone | 0d | 2013-09-24 | 2013-09-24 | 51 | 23d | 0d |  |
| 53 | 1.3.2.5 | Elaboración de principales prototipos de interfaz gráfica del sistema |  | 5d | 2013-09-25 | 2013-10-01 | 52 | 23d | 0d |  |
| 54 | 1.3.2.6 | Prototipos de interfaz gráfica elaborados |  | 1d | 2013-10-02 | 2013-10-02 | 53 | 23d | 0d |  |
| 55 | 1.3.2.7 | Definición de la arquitectura del sistema |  | 3d | 2013-10-03 | 2013-10-07 | 54 | 23d | 0d |  |
| 56 | 1.3.2.8 | Arquitectura del sistema definido | milestone | 0d | 2013-10-07 | 2013-10-07 | 55 | 23d | 0d |  |

Notes:
- 32: Proceso de Asignacion de Recursos a Gantt: / a) Registre los Recursos en: Ver/Hoja de Recursos / Ingrese los Recursos, sus Iniciales y Disponibilidad (Capacidad Maxima) / b) Vuelva al diagrama de Gantt: Ver/Diagrama de Gantt. / c) Asigne los Recursos a las tareas: Doble Clic sobre Tarea. / d) Elija pestaña [Recursos]: Selecionar recursos para la tarea en [Nombre de Recurso] / d) Acepte. Clic en (Aceptar)

| ID | WBS | Task | Type | Duration | Start | Finish | Predecessors | Total slack | Free slack | Constraint |
| --- | --- | --- | --- | --- | --- | --- | --- | --- | --- | --- |
| 57 | 1.3.3 | **Fase de Implementación** |  | 42d | 2013-10-08 | 2013-12-04 |  | 23d |  |  |
| 58 | 1.3.3.1 | Iteración 1 - Implementación y Pruebas |  | 7d | 2013-10-08 | 2013-10-16 | 56 | 23d | 0d | start no earlier than 2013-10-02 |
| 59 | 1.3.3.2 | Iteración 1 completada | milestone | 0d | 2013-10-16 | 2013-10-16 | 58 | 23d | 0d |  |
| 60 | 1.3.3.3 | Iteración 2 - Implementación y Pruebas |  | 7d | 2013-10-17 | 2013-10-25 | 59 | 23d | 0d | start no earlier than 2013-10-11 |
| 61 | 1.3.3.4 | Iteración 2 completada | milestone | 0d | 2013-10-25 | 2013-10-25 | 60 | 23d | 0d |  |
| 62 | 1.3.3.5 | Iteración 3 - Implementación y Pruebas |  | 7d | 2013-10-28 | 2013-11-05 | 61 | 23d | 0d |  |
| 63 | 1.3.3.6 | Iteración 3 completada | milestone | 0d | 2013-11-05 | 2013-11-05 | 62 | 23d | 0d |  |
| 64 | 1.3.3.7 | Iteración 4 - Implementación y Pruebas |  | 7d | 2013-11-06 | 2013-11-14 | 63 | 23d | 0d |  |
| 65 | 1.3.3.8 | Iteración 4 completada | milestone | 0d | 2013-11-14 | 2013-11-14 | 64 | 23d | 0d |  |
| 66 | 1.3.3.9 | Iteración 5 - Implementación y Pruebas |  | 7d | 2013-11-15 | 2013-11-25 | 65 | 23d | 0d |  |
| 67 | 1.3.3.10 | Iteración 5 completada | milestone | 0d | 2013-11-25 | 2013-11-25 | 66 | 23d | 0d |  |
| 68 | 1.3.3.11 | Iteración 6 - Implementación y Pruebas |  | 7d | 2013-11-26 | 2013-12-04 | 67 | 23d | 0d |  |
| 69 | 1.3.3.12 | Iteración 6 completada | milestone | 0d | 2013-12-04 | 2013-12-04 | 68 | 23d |  |  |
| 70 | 1.4 | **4. Control** |  | 177d | 2013-04-08 | 2013-12-09 |  | 20d |  |  |
| 71 | 1.4.1 | **Reuniones semanales con el asesor para la primera parte del proyecto de fin de carrera (tesis 1)** |  | 52d | 2013-04-08 | 2013-06-17 |  | 145d |  |  |
| 72 | 1.4.1.1 | **Reunión con el asesor** |  | 52d | 2013-04-08 | 2013-06-17 |  | 145d |  |  |
| 73 | 1.4.1.1.1 | Reunión con el asesor 1 |  | 1d | 2013-04-08 | 2013-04-08 |  | 196d | 0d | start no earlier than 2013-04-08 |
| 74 | 1.4.1.1.2 | Control del proyecto realizado | milestone | 0d | 2013-04-08 | 2013-04-08 | 73 | 196d |  |  |
| 75 | 1.4.1.1.3 | Reunión con el asesor 2 |  | 1d | 2013-04-15 | 2013-04-15 | 74 | 182d | 0d | start no earlier than 2013-04-15 |
| 76 | 1.4.1.1.4 | Control del proyecto realizado | milestone | 0d | 2013-04-15 | 2013-04-15 | 75 | 182d | 4d |  |
| 77 | 1.4.1.1.5 | Reunión con el asesor 3 |  | 1d | 2013-04-22 | 2013-04-22 | 76 | 186d | 0d | start no earlier than 2013-04-22 |
| 78 | 1.4.1.1.6 | Control del proyecto realizado | milestone | 0d | 2013-04-22 | 2013-04-22 | 77 | 178d | 5d |  |
| 79 | 1.4.1.1.7 | Reunión con el asesor 4 |  | 1d | 2013-04-29 | 2013-04-29 | 78 | 180d | 0d | start no earlier than 2013-04-29 |
| 80 | 1.4.1.1.8 | Control del proyecto realizado | milestone | 0d | 2013-04-29 | 2013-04-29 | 79 | 173d | 4d |  |
| 81 | 1.4.1.1.9 | Reunión con el asesor 5 |  | 1d | 2013-05-06 | 2013-05-06 | 80 | 175d | 0d | start no earlier than 2013-05-06 |
| 82 | 1.4.1.1.10 | Control del proyecto realizado | milestone | 0d | 2013-05-06 | 2013-05-06 | 81 | 175d |  |  |
| 83 | 1.4.1.1.11 | Reunión con el asesor 6 |  | 1d | 2013-05-13 | 2013-05-13 | 82 | 170d | 0d | start no earlier than 2013-05-13 |
| 84 | 1.4.1.1.12 | Control del proyecto realizado | milestone | 0d | 2013-05-13 | 2013-05-13 | 83 | 170d |  |  |
| 85 | 1.4.1.1.13 | Reunión con el asesor 7 |  | 1d | 2013-05-20 | 2013-05-20 | 84 | 165d | 0d | start no earlier than 2013-05-20 |
| 86 | 1.4.1.1.14 | Control del proyecto realizado | milestone | 0d | 2013-05-20 | 2013-05-20 | 85 | 165d |  |  |
| 87 | 1.4.1.1.15 | Reunión con el asesor 8 |  | 1d | 2013-05-27 | 2013-05-27 | 86 | 157d | 0d | start no earlier than 2013-05-27 |
| 88 | 1.4.1.1.16 | Control del proyecto realizado | milestone | 0d | 2013-05-27 | 2013-05-27 | 87 | 160d |  |  |
| 89 | 1.4.1.1.17 | Reunión con el asesor 9 |  | 1d | 2013-06-03 | 2013-06-03 | 88 | 153d | 0d | start no earlier than 2013-06-03 |
| 90 | 1.4.1.1.18 | Control del proyecto realizado | milestone | 0d | 2013-06-03 | 2013-06-03 | 89 | 155d |  |  |
| 91 | 1.4.1.1.19 | Reunión con el asesor 10 |  | 1d | 2013-06-10 | 2013-06-10 | 90 | 149d | 0d | start no earlier than 2013-06-10 |
| 92 | 1.4.1.1.20 | Control del proyecto realizado | milestone | 0d | 2013-06-10 | 2013-06-10 | 91 | 150d |  |  |
| 93 | 1.4.1.1.21 | Reunión con el asesor 11 |  | 1d | 2013-06-17 | 2013-06-17 | 92 | 145d | 0d | start no earlier than 2013-06-17 |
| 94 | 1.4.1.1.22 | Control del proyecto realizado | milestone | 0d | 2013-06-17 | 2013-06-17 | 93 | 145d |  |  |

| ID | WBS | Task | Type | Duration | Start | Finish | Predecessors | Total slack | Free slack | Constraint |
| --- | --- | --- | --- | --- | --- | --- | --- | --- | --- | --- |
| 95 | 1.4.2 | **Reuniones semanales con el asesor para la segunda parte del proyecto de fin de carrera (tesis 2)** |  | 76d | 2013-08-26 | 2013-12-09 |  | 20d |  |  |
| 96 | 1.4.2.1 | **Reunión con el asesor** |  | 76d | 2013-08-26 | 2013-12-09 |  | 20d |  |  |
| 97 | 1.4.2.1.1 | Reunión con el asesor 1 |  | 1d | 2013-08-26 | 2013-08-26 |  | 95d | 0d | start no earlier than 2013-08-26 |
| 98 | 1.4.2.1.2 | Control del proyecto realizado | milestone | 0d | 2013-08-26 | 2013-08-26 | 97 | 95d |  |  |
| 99 | 1.4.2.1.3 | Reunión con el asesor 2 |  | 1d | 2013-09-02 | 2013-09-02 | 98 | 90d | 0d | start no earlier than 2013-09-02 |
| 100 | 1.4.2.1.4 | Control del proyecto realizado | milestone | 0d | 2013-09-02 | 2013-09-02 | 99 | 90d |  |  |
| 101 | 1.4.2.1.5 | Reunión con el asesor 3 |  | 1d | 2013-09-09 | 2013-09-09 | 100 | 85d | 0d | start no earlier than 2013-09-09 |
| 102 | 1.4.2.1.6 | Control del proyecto realizado | milestone | 0d | 2013-09-09 | 2013-09-09 | 101 | 85d |  |  |
| 103 | 1.4.2.1.7 | Reunión con el asesor 4 |  | 1d | 2013-09-16 | 2013-09-16 | 102 | 80d | 0d | start no earlier than 2013-09-16 |
| 104 | 1.4.2.1.8 | Control del proyecto realizado | milestone | 0d | 2013-09-16 | 2013-09-16 | 103 | 80d |  |  |
| 105 | 1.4.2.1.9 | Reunión con el asesor 5 |  | 1d | 2013-09-23 | 2013-09-23 | 104 | 75d | 0d | start no earlier than 2013-09-23 |
| 106 | 1.4.2.1.10 | Control del proyecto realizado | milestone | 0d | 2013-09-23 | 2013-09-23 | 105 | 75d |  |  |
| 107 | 1.4.2.1.11 | Reunión con el asesor 6 |  | 1d | 2013-09-30 | 2013-09-30 | 106 | 70d | 0d | start no earlier than 2013-09-30 |
| 108 | 1.4.2.1.12 | Control del proyecto realizado | milestone | 0d | 2013-09-30 | 2013-09-30 | 107 | 70d |  |  |
| 109 | 1.4.2.1.13 | Reunión con el asesor 7 |  | 1d | 2013-10-07 | 2013-10-07 | 108 | 65d | 0d | start no earlier than 2013-10-07 |
| 110 | 1.4.2.1.14 | Control del proyecto realizado | milestone | 0d | 2013-10-07 | 2013-10-07 | 109 | 65d |  |  |
| 111 | 1.4.2.1.15 | Reunión con el asesor 8 |  | 1d | 2013-10-14 | 2013-10-14 | 110 | 60d | 0d | start no earlier than 2013-10-14 |
| 112 | 1.4.2.1.16 | Control del proyecto realizado | milestone | 0d | 2013-10-14 | 2013-10-14 | 111 | 60d |  |  |
| 113 | 1.4.2.1.17 | Reunión con el asesor 9 |  | 1d | 2013-10-21 | 2013-10-21 | 112 | 55d | 0d | start no earlier than 2013-10-21 |
| 114 | 1.4.2.1.18 | Control del proyecto realizado | milestone | 0d | 2013-10-21 | 2013-10-21 | 113 | 55d |  |  |
| 115 | 1.4.2.1.19 | Reunión con el asesor 10 |  | 1d | 2013-10-28 | 2013-10-28 | 114 | 50d | 0d | start no earlier than 2013-10-28 |
| 116 | 1.4.2.1.20 | Control del proyecto realizado | milestone | 0d | 2013-10-28 | 2013-10-28 | 115 | 50d |  |  |
| 117 | 1.4.2.1.21 | Reunión con el asesor 11 |  | 1d | 2013-11-04 | 2013-11-04 | 116 | 45d | 0d | start no earlier than 2013-11-04 |
| 118 | 1.4.2.1.22 | Control del proyecto realizado | milestone | 0d | 2013-11-04 | 2013-11-04 | 117 | 45d |  |  |
| 119 | 1.4.2.1.23 | Reunión con el asesor 12 |  | 1d | 2013-11-11 | 2013-11-11 | 118 | 40d | 0d | start no earlier than 2013-11-11 |
| 120 | 1.4.2.1.24 | Control del proyecto realizado | milestone | 0d | 2013-11-11 | 2013-11-11 | 119 | 40d |  |  |
| 121 | 1.4.2.1.25 | Reunión con el asesor 13 |  | 1d | 2013-11-18 | 2013-11-18 | 120 | 35d | 0d | start no earlier than 2013-11-18 |
| 122 | 1.4.2.1.26 | Control del proyecto realizado | milestone | 0d | 2013-11-18 | 2013-11-18 | 121 | 35d |  |  |
| 123 | 1.4.2.1.27 | Reunión con el asesor 14 |  | 1d | 2013-11-25 | 2013-11-25 | 122 | 30d | 0d | start no earlier than 2013-11-25 |
| 124 | 1.4.2.1.28 | Control del proyecto realizado | milestone | 0d | 2013-11-25 | 2013-11-25 | 123 | 30d |  |  |
| 125 | 1.4.2.1.29 | Reunión con el asesor 15 |  | 1d | 2013-12-02 | 2013-12-02 | 124 | 25d | 0d | start no earlier than 2013-12-02 |
| 126 | 1.4.2.1.30 | Control del proyecto realizado | milestone | 0d | 2013-12-02 | 2013-12-02 | 125 | 25d |  |  |
| 127 | 1.4.2.1.31 | Reunión con el asesor 16 |  | 1d | 2013-12-09 | 2013-12-09 | 126 | 20d | 0d | start no earlier than 2013-12-09 |
| 128 | 1.4.2.1.32 | Control del proyecto realizado | milestone | 0d | 2013-12-09 | 2013-12-09 | 127 | 20d |  |  |

| ID | WBS | Task | Type | Duration | Start | Finish | Predecessors | Total slack | Free slack | Constraint |
| --- | --- | --- | --- | --- | --- | --- | --- | --- | --- | --- |
| 129 | 1.4.3 | **Reuniones quincenales con los usuarios lideres del sistema** |  | 111d | 2013-07-05 | 2013-12-06 |  | 0d |  |  |
| 130 | 1.4.3.1 | **Reunión con usuarios del sistema** |  | 111d | 2013-07-05 | 2013-12-06 |  |  |  |  |
| 131 | 1.4.3.1.1 | Reunión con usuarios del sistema 1 |  | 1d | 2013-07-05 | 2013-07-05 |  | 110d | 0d | start no earlier than 2013-07-05 |
| 132 | 1.4.3.1.2 | Control del producto realizado | milestone | 0d | 2013-07-05 | 2013-07-05 | 131 | 110d |  |  |
| 133 | 1.4.3.1.3 | Reunión con usuarios del sistema 2 |  | 1d | 2013-07-19 | 2013-07-19 | 132 | 100d | 0d | start no earlier than 2013-07-19 |
| 134 | 1.4.3.1.4 | Control del producto realizado | milestone | 0d | 2013-07-19 | 2013-07-19 | 133 | 100d |  |  |
| 135 | 1.4.3.1.5 | Reunión con usuarios del sistema 3 |  | 1d | 2013-08-02 | 2013-08-02 | 134 | 90d | 0d | start no earlier than 2013-08-02 |
| 136 | 1.4.3.1.6 | Control del producto realizado | milestone | 0d | 2013-08-02 | 2013-08-02 | 135 | 90d |  |  |
| 137 | 1.4.3.1.7 | Reunión con usuarios del sistema 4 |  | 1d | 2013-08-16 | 2013-08-16 | 136 | 80d | 0d | start no earlier than 2013-08-16 |
| 138 | 1.4.3.1.8 | Control del producto realizado | milestone | 0d | 2013-08-16 | 2013-08-16 | 137 | 80d |  |  |
| 139 | 1.4.3.1.9 | Reunión con usuarios del sistema 5 |  | 1d | 2013-08-30 | 2013-08-30 | 138 | 70d | 0d | start no earlier than 2013-08-30 |
| 140 | 1.4.3.1.10 | Control del producto realizado | milestone | 0d | 2013-08-30 | 2013-08-30 | 139 | 70d |  |  |
| 141 | 1.4.3.1.11 | Reunión con usuarios del sistema 6 |  | 1d | 2013-09-13 | 2013-09-13 | 140 | 60d | 0d | start no earlier than 2013-09-13 |
| 142 | 1.4.3.1.12 | Control del producto realizado | milestone | 0d | 2013-09-13 | 2013-09-13 | 141 | 60d |  |  |
| 143 | 1.4.3.1.13 | Reunión con usuarios del sistema 7 |  | 1d | 2013-09-27 | 2013-09-27 | 142 | 50d | 0d | start no earlier than 2013-09-27 |
| 144 | 1.4.3.1.14 | Control del producto realizado | milestone | 0d | 2013-09-27 | 2013-09-27 | 143 | 50d |  |  |
| 145 | 1.4.3.1.15 | Reunión con usuarios del sistema 8 |  | 1d | 2013-10-11 | 2013-10-11 | 144 | 40d | 0d | start no earlier than 2013-10-11 |
| 146 | 1.4.3.1.16 | Control del producto realizado | milestone | 0d | 2013-10-11 | 2013-10-11 | 145 | 40d |  |  |
| 147 | 1.4.3.1.17 | Reunión con usuarios del sistema 9 |  | 1d | 2013-10-25 | 2013-10-25 | 146 | 30d | 0d | start no earlier than 2013-10-25 |
| 148 | 1.4.3.1.18 | Control del producto realizado | milestone | 0d | 2013-10-25 | 2013-10-25 | 147 | 30d |  |  |
| 149 | 1.4.3.1.19 | Reunión con usuarios del sistema 10 |  | 1d | 2013-11-08 | 2013-11-08 | 148 | 20d | 0d | start no earlier than 2013-11-08 |
| 150 | 1.4.3.1.20 | Control del producto realizado | milestone | 0d | 2013-11-08 | 2013-11-08 | 149 | 20d |  |  |
| 151 | 1.4.3.1.21 | Reunión con usuarios del sistema 11 |  | 1d | 2013-11-22 | 2013-11-22 | 150 | 10d | 0d | start no earlier than 2013-11-22 |
| 152 | 1.4.3.1.22 | Control del producto realizado | milestone | 0d | 2013-11-22 | 2013-11-22 | 151 | 10d |  |  |
| 153 | 1.4.3.1.23 | Reunión con usuarios del sistema 12 |  | 1d | 2013-12-06 | 2013-12-06 | 152 | 0d |  | start no earlier than 2013-12-06 |
| 154 | 1.4.3.1.24 | Control del producto realizado | milestone | 0d | 2013-12-06 | 2013-12-06 | 153 | 0d |  |  |

| ID | WBS | Task | Type | Duration | Start | Finish | Predecessors | Total slack | Free slack | Constraint |
| --- | --- | --- | --- | --- | --- | --- | --- | --- | --- | --- |
| 155 | 1.5 | **5. Cierre** |  | 21d | 2013-12-09 | 2014-01-06 |  | 0d |  |  |
| 156 | 1.5.1 | Elaboración del informe final del proyecto |  | 6d | 2013-12-09 | 2013-12-16 |  | 15d | 0d | start no earlier than 2013-12-09 |
| 157 | 1.5.2 | Informe final del proyecto de fin de carrera | milestone | 0d | 2013-12-16 | 2013-12-16 | 156 | 15d |  | start no earlier than 2013-12-16 |
| 158 | 1.5.3 | Sustentación final del proyecto ante jurado |  | 1d | 2014-01-06 | 2014-01-06 | 157 | 0d |  | start no earlier than 2014-01-06 |
